# GantTP2

Schedule from MS Project, 2009-04-01 to 2009-11-10.

## Calendars

- Estándar: Mon-Fri 09:00-13:00, 15:00-19:00; Sat-Sun off.

## Resources

| Resource | Rate |
| --- | --- |
| Analista | 10 |
| Desarrollador |  |
| Lider |  |
| Tester |  |
| Arquitecto |  |
| Usuario |  |
| Responsable Usuario |  |
| Gerencia |  |
| Lider 50% |  |
| Analista1 |  |
| Analista2 |  |
| Analista3 |  |
| Ingeniero CU |  |
| Diseñador |  |
| Diseñador1 |  |
| Diseñador2 |  |
| Programador1 |  |
| Programador2 |  |
| Programador3 |  |
| Programador4 |  |
| Integrador de Sistemas |  |
| Capacitador |  |
| Administrador de BD |  |
| pr |  |

## Schedule

| ID | WBS | Task | Type | Duration | Start | Finish | Predecessors | Baseline start | Baseline finish | Baseline duration | Total slack | Constraint | Resources | Work |
| --- | --- | --- | --- | --- | --- | --- | --- | --- | --- | --- | --- | --- | --- | --- |
| 1 | 1 | **Proyecto Evenmed** |  | 160d | 2009-04-01 | 2009-11-10 |  | 2009-04-01 | 2009-08-07 | 92.42d | 0d |  |  | 3264h |
| 2 | 1.1 | **Relevamiento** |  | 15d | 2009-04-01 | 2009-04-21 |  | 2009-04-01 | 2009-04-21 | 15d | 0d |  |  | 232h |
| 3 | 1.1.1 | Visitas Periodicas al personal Gerencial |  | 2d | 2009-04-01 | 2009-04-02 |  | 2009-04-01 | 2009-04-02 | 2d | 13d | finish no earlier than 2009-04-02 | Lider 50% | 16h |
| 4 | 1.1.2 | Encuestas al personal |  | 2d | 2009-04-02 | 2009-04-04 |  | 2009-04-03 | 2009-04-04 | 1d | 1d | finish no earlier than 2009-04-04 | Analista1; Analista2; Analista3 | 48h |
| 5 | 1.1.3 | Informe de encuestas |  | 1d | 2009-04-07 | 2009-04-07 | 4 | 2009-04-07 | 2009-04-07 | 1d | 0d | start no earlier than 2009-04-07 | Analista1 | 8h |
| 6 | 1.1.4 | Realizar informe de la captura de requisitos a traves de CU |  | 10d | 2009-04-08 | 2009-04-21 | 5 | 2009-04-08 | 2009-04-14 | 5d | 0d |  | Analista3; Analista2 | 160h |
| 7 | 1.1.5 | Informe Captura Requisitos | milestone | 0d | 2009-04-21 | 2009-04-21 | 6 | 2009-04-21 | 2009-04-21 | 0d | 0d | finish no earlier than 2009-04-21 |  |  |
| 8 | 1.2 | **Analisis** |  | 9d | 2009-04-22 | 2009-05-04 | 2 | 2009-04-22 | 2009-04-28 | 4.5d | 0d |  |  | 312h |
| 9 | 1.2.1 | Análisis de Factibilidad |  | 1d | 2009-04-22 | 2009-04-22 | 7 | 2009-04-22 | 2009-04-22 | 0.5d | 0d |  | Analista1; Lider | 16h |
| 10 | 1.2.2 | Informe de Análisis de Factibilidad | milestone | 0d | 2009-04-22 | 2009-04-22 | 9 | 2009-04-22 | 2009-04-22 | 0d | 8d |  |  |  |
| 11 | 1.2.3 | Análisis de Riesgo |  | 1d | 2009-04-22 | 2009-04-22 | 7 | 2009-04-22 | 2009-04-22 | 0.5d | 8d |  | Analista2; Lider | 16h |
| 12 | 1.2.4 | Informe de Análisis de Riesgo | milestone | 0d | 2009-04-22 | 2009-04-22 | 9 | 2009-04-22 | 2009-04-22 | 0d | 8d |  |  |  |
| 13 | 1.2.5 | Análisis de Impacto Ambiental |  | 1d | 2009-04-22 | 2009-04-22 | 7 | 2009-04-22 | 2009-04-22 | 0.5d | 8d |  | Analista3; Lider | 16h |
| 14 | 1.2.6 | Informe de Análisis de Impacto Ambiental | milestone | 0d | 2009-04-22 | 2009-04-22 | 9 | 2009-04-22 | 2009-04-22 | 0d | 0d |  |  |  |
| 15 | 1.2.7 | Analizar la información del relevamiento e identificar los CU del sistema |  | 4d | 2009-04-23 | 2009-04-28 | 14 | 2009-04-22 | 2009-04-24 | 2d | 4d |  | Analista1; Arquitecto | 64h |
| 16 | 1.2.8 | Analizar CU de la captura de requisitos |  | 4d | 2009-04-23 | 2009-04-28 | 14 | 2009-04-22 | 2009-04-24 | 2d | 0d |  | Ingeniero CU; Analista1 | 64h |
| 17 | 1.2.9 | Identificar clases de análisis, sus responsabilidades, atributos y relaciones |  | 3d | 2009-04-29 | 2009-05-01 | 16 | 2009-04-24 | 2009-04-27 | 1d | 1d |  | Arquitecto; Ingeniero CU; Analista2 | 72h |
| 18 | 1.2.10 | Realizar la secuencia-análisis de los CU |  | 4d | 2009-04-29 | 2009-05-04 | 16 | 2009-04-24 | 2009-04-28 | 2d | 0d |  | Analista3; Ingeniero CU | 64h |
| 19 | 1.2.11 | Informe de Análisis | milestone | 0d | 2009-05-04 | 2009-05-04 | 18 | 2009-04-28 | 2009-04-28 | 0d | 0d |  |  |  |
| 20 | 1.3 | **Diseño** |  | 27d | 2009-05-05 | 2009-06-10 | 8 | 2009-04-28 | 2009-05-14 | 12.17d | 0d |  |  | 608h |
| 21 | 1.3.1 | Seleccionar el lenguage de programación en el que se va a programar el sistema |  | 1d | 2009-05-05 | 2009-05-05 |  | 2009-04-28 | 2009-04-29 | 1.5d | 0d |  | Arquitecto; Diseñador1; Lider | 24h |
| 22 | 1.3.2 | Elegir el modo de implementación |  | 3d | 2009-05-06 | 2009-05-08 | 21 | 2009-04-30 | 2009-05-01 | 2d | 0d |  | Arquitecto; Diseñador2 | 48h |
| 23 | 1.3.3 | Crear las clases de diseño correspondientes |  | 5d | 2009-05-11 | 2009-05-15 | 22 | 2009-05-04 | 2009-05-05 | 1.67d | 0d |  | Arquitecto; Diseñador1; Diseñador2 | 120h |
| 24 | 1.3.4 | Realizar la secuencia-diseño de los casos de uso |  | 4d | 2009-05-18 | 2009-05-21 | 23 | 2009-05-05 | 2009-05-07 | 1.67d | 0d |  | Arquitecto; Diseñador1; Diseñador2 | 96h |
| 25 | 1.3.5 | Identificar los subsistemas y subsistemas de servicios |  | 4d | 2009-05-22 | 2009-05-27 | 24 | 2009-05-07 | 2009-05-08 | 1.67d | 0d |  | Arquitecto; Diseñador1; Diseñador2; Lider | 128h |
| 26 | 1.3.6 | Diseñar las interfaces de los distintos CU |  | 5d | 2009-05-28 | 2009-06-03 | 25 | 2009-05-11 | 2009-05-12 | 1.67d | 0d |  | Arquitecto; Diseñador1; Diseñador2 | 120h |
| 27 | 1.3.7 | Planificación de pruebas de integración y de seguridad |  | 3d | 2009-06-04 | 2009-06-08 | 26 | 2009-05-12 | 2009-05-14 | 2d | 0d |  | Integrador de Sistemas | 24h |
| 28 | 1.3.8 | Configuración de entorno de desarrollo |  | 2d | 2009-06-09 | 2009-06-10 | 27 |  |  |  | 0d |  | Arquitecto; Administrador de BD; Lider | 48h |
| 29 | 1.3.9 | Informe de diseño | milestone | 0d | 2009-06-10 | 2009-06-10 | 28 | 2009-05-14 | 2009-05-14 | 0d | 0d |  |  |  |

| ID | WBS | Task | Type | Duration | Start | Finish | Predecessors | Baseline start | Baseline finish | Baseline duration | Total slack | Constraint | Resources | Work |
| --- | --- | --- | --- | --- | --- | --- | --- | --- | --- | --- | --- | --- | --- | --- |
| 30 | 1.4 | **Implementación** |  | 109d | 2009-06-11 | 2009-11-10 | 20 | 2009-05-14 | 2009-08-07 | 60.75d | 0d |  |  | 2112h |
| 31 | 1.4.1 | Desarrollo de Módulo de Configuración de Tanques |  | 14d | 2009-06-11 | 2009-06-30 |  | 2009-05-14 | 2009-05-20 | 3.5d | 0d |  | Programador1; Programador2; Lider | 336h |
| 32 | 1.4.2 | Módulo de Configuración de Tanques | milestone | 0d | 2009-06-30 | 2009-06-30 | 31 | 2009-05-20 | 2009-05-20 | 0d | 0d |  |  |  |
| 33 | 1.4.3 | Desarrollar Módulo de Control de Temperatura, de Nivel y de Remontaje |  | 12d | 2009-07-01 | 2009-07-16 | 32 | 2009-05-20 | 2009-05-25 | 3.25d | 0d |  | Lider; Programador3; Programador4 | 288h |
| 34 | 1.4.4 | Módulo de Control de Temperatura, de Nivel y de Remontaje | milestone | 0d | 2009-07-16 | 2009-07-16 | 33 | 2009-05-25 | 2009-05-25 | 0d | 0d |  |  |  |
| 35 | 1.4.5 | Desarrollo Módulo de Comunicación con otros sistemas |  | 14d | 2009-07-17 | 2009-08-05 | 34 | 2009-05-25 | 2009-05-28 | 3.25d | 0d |  | Programador1; Programador3; Integrador de Sistemas | 336h |
| 36 | 1.4.6 | Módulo de Comunicación con otros sistemas | milestone | 0d | 2009-08-05 | 2009-08-05 | 35 | 2009-05-28 | 2009-05-28 | 0d | 0d |  |  |  |
| 37 | 1.4.7 | Desarrollo de Módulo de Alarmas |  | 10d | 2009-08-06 | 2009-08-19 | 36 | 2009-05-28 | 2009-06-02 | 2.75d | 0d |  | Programador2; Programador4 | 160h |
| 38 | 1.4.8 | Módulo de Alarmas | milestone | 0d | 2009-08-19 | 2009-08-19 | 37 | 2009-06-02 | 2009-06-02 | 0d | 0d |  |  |  |
| 39 | 1.4.9 | Desarrollo del Módulo de Operaciones |  | 12d | 2009-08-20 | 2009-09-04 | 38 | 2009-06-02 | 2009-06-18 | 12d | 0d |  | Programador1; Programador4 | 192h |
| 40 | 1.4.10 | Módulo de Operaciones | milestone | 0d | 2009-09-04 | 2009-09-04 | 39 | 2009-06-18 | 2009-06-18 | 0d | 0d |  |  |  |
| 41 | 1.4.11 | Desarrollar Módulo de Reportes de Alarmas, de Operaciones |  | 12d | 2009-09-07 | 2009-09-22 | 40 | 2009-07-06 | 2009-07-22 | 12d | 0d |  | Programador1; Programador2 | 192h |
| 42 | 1.4.12 | Módulo de Reportes de Alarmas, de Operaciones | milestone | 0d | 2009-09-22 | 2009-09-22 | 41 | 2009-07-22 | 2009-07-22 | 0d | 0d |  |  |  |
| 43 | 1.4.13 | Desarrollar Módulo de Seguridad |  | 10d | 2009-09-23 | 2009-10-06 | 42 | 2009-07-22 | 2009-08-07 | 12d | 0d |  | Programador3; Programador4; Integrador de Sistemas | 240h |
| 44 | 1.4.14 | Modulo de Seguridad | milestone | 0d | 2009-10-07 | 2009-10-07 |  | 2009-08-07 | 2009-08-07 | 0d | 0d | start no earlier than 2009-10-07 |  |  |
| 45 | 1.4.15 | Desarrollar Módulo de Proceso |  | 14d | 2009-10-07 | 2009-10-26 | 43, 44 |  |  |  | 0d | start no earlier than 2009-10-05 | Programador2; Programador3 | 224h |
| 46 | 1.4.16 | Módulo de Proceso | milestone | 0d | 2009-10-26 | 2009-10-26 | 45 |  |  |  | 0d | start no earlier than 2009-10-12 |  |  |
| 47 | 1.4.17 | Planificación de la capacitación |  | 2d | 2009-10-27 | 2009-10-28 | 46 | 2009-05-14 | 2009-05-18 | 2d | 0d |  | Capacitador | 16h |
| 48 | 1.4.18 | Ejecución y retroalimentación de pruebas |  | 3d | 2009-10-07 | 2009-10-09 | 44 | 2009-05-14 | 2009-05-19 | 3d | 22d |  | Integrador de Sistemas | 24h |
| 49 | 1.4.19 | Manual de Usuario |  | 2d | 2009-10-29 | 2009-10-30 | 47 |  |  |  | 0d |  | Capacitador | 16h |
| 50 | 1.4.20 | Capacitación Modulo de Configuración de Tanques |  | 1d | 2009-11-02 | 2009-11-02 | 49 |  |  |  | 0d |  | Capacitador | 8h |
| 51 | 1.4.21 | Capacitación Módulo de Control de Temperatura, de Nivel y de Remontaje |  | 1d | 2009-11-03 | 2009-11-03 | 50 |  |  |  | 0d |  | Capacitador | 8h |
| 52 | 1.4.22 | Capacitación de Módulo de Alarmas |  | 1d | 2009-11-04 | 2009-11-04 | 51 |  |  |  | 0d |  | Capacitador | 8h |
| 53 | 1.4.23 | Capacitación Módulo de Operaciones |  | 1d | 2009-11-05 | 2009-11-05 | 52 |  |  |  | 0d |  | Capacitador | 8h |
| 54 | 1.4.24 | Capacitación Módulo de Reportes de Alarmas, de Operaciones |  | 1d | 2009-11-06 | 2009-11-06 | 53 |  |  |  | 0d |  | Capacitador | 8h |
| 55 | 1.4.25 | Capacitación Módulo de Seguridad |  | 1d | 2009-11-09 | 2009-11-09 | 54 |  |  |  | 0d |  | Capacitador | 8h |
| 56 | 1.4.26 | Informe de Capacitación | milestone | 0d | 2009-11-09 | 2009-11-09 | 55 |  |  |  | 0d |  |  |  |
| 57 | 1.4.27 | Puesta en Marcha |  | 1d | 2009-11-10 | 2009-11-10 | 56 |  |  |  | 0d |  | Lider; Programador1; Programador2; Programador3; Programador4 | 40h |
| 58 | 1.4.28 | Informe de Implementación | milestone | 0d | 2009-11-10 | 2009-11-10 | 57 | 2009-08-07 | 2009-08-07 | 0d | 0d |  |  |  |
