# GantTP2

Schedule from MS Project, 2009-04-01 to 2009-10-27, costs in $.

## Calendars

- Estándar: Mon-Fri 09:00-13:00, 15:00-19:00; Sat-Sun off.

## Resources

| Resource | Rate |
| --- | --- |
| Analista | 10 |
| Desarrollador |  |
| Lider |  |
| Tester |  |
| Arquitecto |  |
| Usuario |  |
| Responsable Usuario |  |
| Gerencia |  |
| Lider 50% |  |

## Schedule

| ID | WBS | Task | Type | Duration | Start | Finish | Predecessors | Total slack | Constraint | Resources | Work | Cost |
| --- | --- | --- | --- | --- | --- | --- | --- | --- | --- | --- | --- | --- |
| 1 | 1 | **Proyecto Evenmed** |  | 150d | 2009-04-01 | 2009-10-27 |  | 0d |  |  | 864h | 2,240 |
| 2 | 1.1 | **Relevamiento** |  | 15d | 2009-04-01 | 2009-04-21 |  | 0d |  |  | 120h | 1,040 |
| 3 | 1.1.1 | Visitas Periodicas al personal Gerencial |  | 2d | 2009-04-01 | 2009-04-02 |  | 13d | finish no earlier than 2009-04-02 | Lider 50% | 16h |  |
| 4 | 1.1.2 | Encuestas al personal |  | 2d | 2009-04-02 | 2009-04-04 |  | 1d | finish no earlier than 2009-04-04 | Analista | 16h | 160 |
| 5 | 1.1.3 | Informe de encuestas |  | 1d | 2009-04-07 | 2009-04-07 | 4 | 0d | start no earlier than 2009-04-07 | Analista | 8h | 80 |
| 6 | 1.1.4 | Realizar informe de la captura de requisitos a traves de CU |  | 10d | 2009-04-08 | 2009-04-21 | 5 | 0d |  | Analista | 80h | 800 |
| 7 | 1.1.5 | Informe Captura Requisitos | milestone | 0d | 2009-04-21 | 2009-04-21 | 6 | 0d | finish no earlier than 2009-04-21 |  |  |  |
| 8 | 1.2 | **Analisis** |  | 9d | 2009-04-22 | 2009-05-04 | 2 | 0d |  |  | 120h | 1,200 |
| 9 | 1.2.1 | Análisis de Factibilidad |  | 1d | 2009-04-22 | 2009-04-22 | 7 | 0d |  |  |  |  |
| 10 | 1.2.2 | Informe de Análisis de Factibilidad | milestone | 0d | 2009-04-22 | 2009-04-22 | 9 | 15d |  |  |  |  |
| 11 | 1.2.3 | Análisis de Riesgo |  | 1d | 2009-04-22 | 2009-04-22 | 7 | 15d |  |  |  |  |
| 12 | 1.2.4 | Informe de Análisis de Riesgo | milestone | 0d | 2009-04-22 | 2009-04-22 | 9 | 15d |  |  |  |  |
| 13 | 1.2.5 | Análisis de Impacto Ambiental |  | 1d | 2009-04-22 | 2009-04-22 | 7 | 15d |  |  |  |  |
| 14 | 1.2.6 | Informe de Análisis de Impacto Ambiental | milestone | 0d | 2009-04-22 | 2009-04-22 | 9 | 0d |  |  |  |  |
| 15 | 1.2.7 | Analizar la información del relevamiento e identificar los CU del sistema |  | 4d | 2009-04-23 | 2009-04-28 | 14 | 4d |  | Analista | 32h | 320 |
| 16 | 1.2.8 | Analizar CU de la captura de requisitos |  | 4d | 2009-04-23 | 2009-04-28 | 14 | 0d |  | Analista | 32h | 320 |
| 17 | 1.2.9 | Identificar clases de análisis, sus responsabilidades, atributos y relaciones |  | 3d | 2009-04-29 | 2009-05-01 | 16 | 1d |  | Analista | 24h | 240 |
| 18 | 1.2.10 | Realizar la secuencia-análisis de los CU |  | 4d | 2009-04-29 | 2009-05-04 | 16 | 0d |  | Analista | 32h | 320 |
| 19 | 1.2.11 | Informe de Análisis | milestone | 0d | 2009-05-04 | 2009-05-04 | 18 | 0d |  |  |  |  |
| 20 | 1.3 | **Diseño** |  | 27d | 2009-05-05 | 2009-06-10 | 8 | 0d |  |  | 216h |  |
| 21 | 1.3.1 | Seleccionar el lenguage de programación en el que se va a programar el sistema |  | 3d | 2009-05-05 | 2009-05-07 |  | 0d |  | Arquitecto | 24h |  |
| 22 | 1.3.2 | Elegir el modo de implementación |  | 4d | 2009-05-08 | 2009-05-13 | 21 | 0d |  | Arquitecto | 32h |  |
| 23 | 1.3.3 | Crear las clases de diseño correspondientes |  | 5d | 2009-05-14 | 2009-05-20 | 22 | 0d |  | Arquitecto | 40h |  |
| 24 | 1.3.4 | Realizar la secuencia-diseño de los casos de uso |  | 5d | 2009-05-21 | 2009-05-27 | 23 | 0d |  | Arquitecto | 40h |  |
| 25 | 1.3.5 | Identificar los subsistemas y subsistemas de servicios |  | 5d | 2009-05-28 | 2009-06-03 | 24 | 0d |  | Arquitecto | 40h |  |
| 26 | 1.3.6 | Diseñar las interfaces de los distintos CU |  | 5d | 2009-06-04 | 2009-06-10 | 25 | 0d |  | Arquitecto | 40h |  |
| 27 | 1.3.7 | Informe de diseño | milestone | 0d | 2009-06-10 | 2009-06-10 | 26 | 0d |  |  |  |  |

| ID | WBS | Task | Type | Duration | Start | Finish | Predecessors | Total slack | Resources | Work |
| --- | --- | --- | --- | --- | --- | --- | --- | --- | --- | --- |
| 28 | 1.4 | **Implementación** |  | 99d | 2009-06-11 | 2009-10-27 | 20 | 0d |  | 408h |
| 29 | 1.4.1 | Desarrollo de Módulo de Configuración de Tanques |  | 14d | 2009-06-11 | 2009-06-30 |  | 0d | Desarrollador | 112h |
| 30 | 1.4.2 | Módulo de Configuración de Tanques | milestone | 0d | 2009-06-30 | 2009-06-30 | 29 | 0d |  |  |
| 31 | 1.4.3 | Desarrollar Módulo de Control de Temperatura, de Nivel y de Remontaje |  | 13d | 2009-07-01 | 2009-07-17 | 30 | 0d | Desarrollador | 104h |
| 32 | 1.4.4 | Módulo de Control de Temperatura, de Nivel y de Remontaje | milestone | 0d | 2009-07-17 | 2009-07-17 | 31 | 0d |  |  |
| 33 | 1.4.5 | Desarrollo Módulo de Comunicación con otros sistemas |  | 13d | 2009-07-20 | 2009-08-05 | 32 | 0d | Desarrollador | 104h |
| 34 | 1.4.6 | Módulo de Comunicación con otros sistemas | milestone | 0d | 2009-08-05 | 2009-08-05 | 33 | 0d |  |  |
| 35 | 1.4.7 | Desarrollo de Módulo de Alarmas |  | 11d | 2009-08-06 | 2009-08-20 | 34 | 0d | Desarrollador | 88h |
| 36 | 1.4.8 | Módulo de Alarmas | milestone | 0d | 2009-08-20 | 2009-08-20 | 35 | 0d |  |  |
| 37 | 1.4.9 | Desarrollo del Módulo de Operaciones |  | 12d | 2009-08-21 | 2009-09-07 | 36 | 0d |  |  |
| 38 | 1.4.10 | Módulo de Operaciones | milestone | 0d | 2009-09-07 | 2009-09-07 | 37 | 0d |  |  |
| 39 | 1.4.11 | Desarrollo de Módulo de Gestión Móvil |  | 12d | 2009-09-08 | 2009-09-23 | 38 | 0d |  |  |
| 40 | 1.4.12 | Módulo de Gestión Móvil | milestone | 0d | 2009-09-23 | 2009-09-23 | 39 | 0d |  |  |
| 41 | 1.4.13 | Desarrollar Módulo de Reportes de Alarmas, de Operaciones |  | 12d | 2009-09-24 | 2009-10-09 | 40 | 0d |  |  |
| 42 | 1.4.14 | Módulo de Reportes de Alarmas, de Operaciones | milestone | 0d | 2009-10-09 | 2009-10-09 | 41 | 0d |  |  |
| 43 | 1.4.15 | Desarrollar Módulo de Seguridad |  | 12d | 2009-10-12 | 2009-10-27 | 42 | 0d |  |  |
| 44 | 1.4.16 | Modulo de Seguridad | milestone | 0d | 2009-10-27 | 2009-10-27 | 43 | 0d |  |  |
| 45 | 1.4.17 | Informe de Implementación | milestone | 0d | 2009-10-27 | 2009-10-27 | 43 | 0d |  |  |
